| TaskID | TaskName | StartDate | EndDate | Duration | Progress | DurationUnit | Predecessor |
| --- | --- | --- | --- | --- | --- | --- | --- |
| 1 | Planning & System Architecture | 2025-08-04T12:00:00.000Z | 2025-08-26T21:00:00.000Z | 17 | 0 | day |  |
| 2 | · Define System Requirements | 2025-08-04T12:00:00.000Z | 2025-08-11T21:00:00.000Z | 6 | 0 | day |  |
| 3 | · Create System Block Diagram | 2025-08-12T12:00:00.000Z | 2025-08-15T21:00:00.000Z | 4 | 0 | day | 2FS |
| 4 | · Identify Safety States and Critical Operational Parameters | 2025-08-18T12:00:00.000Z | 2025-08-25T21:00:00.000Z | 6 | 0 | day | 3FS |
| 5 | · Hardened System Definition | 2025-08-26T21:00:00.000Z | 2025-08-26T21:00:00.000Z | 0 | 0 | day | 4FS+1 day |
| 6 | Buildroot Configuration | 2025-09-01T12:00:00.000Z | 2025-09-26T21:00:00.000Z | 20 | 0 | day |  |
| 8 | · Configure Working Kernel With Debug Interface | 2025-09-01T12:00:00.000Z | 2025-09-12T21:00:00.000Z | 10 | 0 | day |  |
| 11 | · Identify Unused & Non - Necessary Packages | 2025-09-15T12:00:00.000Z | 2025-09-19T21:00:00.000Z | 5 | 0 | day | 8FS |
| 9 | · Strip Kernel and Add Real Time Services | 2025-09-22T12:00:00.000Z | 2025-09-26T21:00:00.000Z | 5 | 0 | day | 11FS |
| 10 | · Kernel Functions Correctly With Debug Interface | 2025-09-26T21:00:00.000Z | 2025-09-26T21:00:00.000Z | 0 | 0 | day | 9FS |
| 12 | I/O Configuration | 2025-09-29T12:00:00.000Z | 2025-10-30T21:00:00.000Z | 24 | 0 | day |  |
| 13 | · Identify Sensor & Actuator I/O Per Prev. Requirements | 2025-09-29T12:00:00.000Z | 2025-10-07T21:00:00.000Z | 7 | 0 | day |  |
| 14 | · Map Driving signals to GPIO Pins | 2025-10-09T12:00:00.000Z | 2025-10-24T21:00:00.000Z | 12 | 0 | day | 13FS+1 day |
| 15 | · Document Direction, Voltage, I/O Protocol | 2025-10-27T12:00:00.000Z | 2025-10-30T21:00:00.000Z | 4 | 0 | day | 14FS |
| 34 | · I/O Is Driven and Functioning Properly | 2025-10-30T21:00:00.000Z | 2025-10-30T21:00:00.000Z | 0 | 0 | day | 15FS |
| 16 | Shield Prototyping (Breadboard & CAD) | 2025-11-03T13:00:00.000Z | 2025-12-01T22:00:00.000Z | 21 | 0 | day |  |
| 17 | · Identify All Current & Voltage Requirements | 2025-11-03T13:00:00.000Z | 2025-11-11T22:00:00.000Z | 7 | 0 | day |  |
| 18 | · Rapid Prototyping Using Breadboard (Neatly) | 2025-11-13T13:00:00.000Z | 2025-11-20T22:00:00.000Z | 6 | 0 | day | 17FS+1 day |
| 36 | · Re-Align With Mechanical Team and Communicate Issues | 2025-11-17T22:00:00.000Z | 2025-11-17T22:00:00.000Z | 0 | 0 | day |  |
| 20 | · Verify All Hardware Functions With GPIO | 2025-11-13T13:00:00.000Z | 2025-11-20T22:00:00.000Z | 6 | 0 | day | 17FS+1 day |
| 19 | · Configure Shield In PCB CAD Software (KiCAD) | 2025-11-24T13:00:00.000Z | 2025-12-01T22:00:00.000Z | 6 | 0 | day | 20FS+1 day,18FS |
| 35 | · Hardware Operation Is Validated and Shield Design Is 80% Complete | 2025-12-01T22:00:00.000Z | 2025-12-01T22:00:00.000Z | 0 | 0 | day | 19FS |
| 37 | Wet Bench Prototyping | 2025-11-03T13:00:00.000Z | 2025-12-01T22:00:00.000Z | 21 | 0 | day |  |
| 21 | Control Loop Development | 2025-12-05T13:00:00.000Z | 2026-01-13T22:00:00.000Z | 28 | 0 | day |  |
| 22 | · Identify Raw Input Signals | 2025-12-05T13:00:00.000Z | 2025-12-10T22:00:00.000Z | 4 | 0 | day |  |
| 23 | · Filter and Trasnlate Inputs | 2025-12-12T13:00:00.000Z | 2025-12-16T22:00:00.000Z | 3 | 0 | day | 22FS+1 day |
| 24 | · Define Startup Logic and Operational Conditions | 2025-12-18T13:00:00.000Z | 2025-12-23T22:00:00.000Z | 4 | 0 | day | 23FS+1 day |
| 27 | · Design and Implement Controls Logic (C++) | 2025-12-18T13:00:00.000Z | 2026-01-09T22:00:00.000Z | 17 | 0 | day | 23FS+1 day |
| 25 | · Finalize PCB Design and Send to Manufacturer | 2025-12-05T13:00:00.000Z | 2025-12-30T22:00:00.000Z | 18 | 0 | day |  |
| 26 | · PCB Sent To Manufacturer and Controls Logic Hardened | 2026-01-13T22:00:00.000Z | 2026-01-13T22:00:00.000Z | 0 | 0 | day | 25FS+10 days,24FS+15 days,27FS+1 day |
| 28 | ECU Engine Integration | 2026-01-16T13:00:00.000Z | 2026-02-23T22:00:00.000Z | 27 | 0 | day |  |
| 29 | · Mount ECU/Hardware to Test Stand | 2026-01-16T13:00:00.000Z | 2026-01-26T22:00:00.000Z | 7 | 0 | day |  |
| 30 | · Verify Sensor/Actuator Operation | 2026-01-28T13:00:00.000Z | 2026-02-03T22:00:00.000Z | 5 | 0 | day | 29FS+1 day |
| 31 | · Validate Control State Transitions | 2026-02-05T13:00:00.000Z | 2026-02-11T22:00:00.000Z | 5 | 0 | day | 30FS+1 day |
| 32 | · Tune and Make Adjusments to ECU | 2026-02-13T13:00:00.000Z | 2026-02-19T22:00:00.000Z | 5 | 0 | day | 31FS+1 day |
| 33 | · ECU/Hardware Are Run - Ready | 2026-02-23T22:00:00.000Z | 2026-02-23T22:00:00.000Z | 0 | 0 | day | 32FS+2 days |

Links (from, to):
- 8 12
- 13 17
